# 2017_03_29_Planning

Schedule from MS Project, 2017-03-21 to 2017-09-08, status date 2017-03-27, A marks actual dates.
Microsoft

## Calendars

- Standard: Mon-Fri 08:00-12:00, 13:00-17:00; Sat-Sun off. Exceptions (off unless hours are given): 2017-03-21 to 2017-07-16 (Arbeitsfreie Tage, recurring), 2017-03-21 to 2017-08-28 07:00-09:00 (2h Montags, recurring), 2017-03-25 to 2017-08-31 20:00-24:00 (2h Samstags, recurring), 2017-06-05 to 2017-06-18 (Pfingsten), 2017-06-26 to 2017-07-16 (Klausuren), 2017-07-17 to 2017-08-31 (Arbeitsfreie Tage Semesterferien, recurring).

## Resources

| Resource |
| --- |
| Thomas |

## Schedule

| ID | WBS | Task | Type | Duration | Start | Finish | Predecessors | Complete | Remaining | Total slack | Free slack | Constraint | Work | Actual work |
| --- | --- | --- | --- | --- | --- | --- | --- | --- | --- | --- | --- | --- | --- | --- |
| 1 | 1 | **[Projekt] Modellbasierte Entwicklung** |  | 45d | 2017-03-21 A | 2017-09-08 |  | 44% | 25.25d | 0d |  |  | 16h | 16h |
| 2 | 1.1 | **[Phase] Analyse und Planung** |  | 2d | 2017-03-21 A | 2017-03-29 A |  | 100% |  |  |  |  |  |  |
| 3 | 1.1.1 | **[AP] Analyse** |  | 1.25d | 2017-03-21 A | 2017-03-25 A |  | 100% |  |  |  |  |  |  |
| 4 | 1.1.1.1 | Bestehende Arbeiten analysieren |  | 4h | 2017-03-21 A | 2017-03-22 A |  | 100% |  |  |  |  |  |  |
| 5 | 1.1.1.2 | Entwicklungsumgebung aufsetzen |  | 6h | 2017-03-22 A | 2017-03-25 A | 4 | 100% |  |  |  |  |  |  |
| 6 | 1.1.2 | **[AP] Projektplanung** |  | 0.5d | 2017-03-25 A | 2017-03-27 A | 3 | 100% |  |  |  |  |  |  |
| 7 | 1.1.2.1 | Initiale Projektplanung |  | 0.5d | 2017-03-25 A | 2017-03-27 A |  | 100% |  |  |  |  |  |  |
| 8 | 1.1.3 | **[AP] Dokumentation** |  | 0.25d | 2017-03-29 A | 2017-03-29 A | 6 | 100% |  |  |  |  |  |  |
| 9 | 1.1.3.1 | Bericht erstellen |  | 2h | 2017-03-29 A | 2017-03-29 A |  | 100% |  |  |  |  |  |  |
| 10 | 1.2 | [MS] Projektplanung abgeschlossen | milestone | 0d | 2017-03-27 A | 2017-03-27 A | 2 | 100% |  |  |  | finish no earlier than 2017-03-29 |  |  |
| 11 | 1.3 | **[Phase] C++ Portierung** |  | 3.75d | 2017-03-29 A | 2017-04-12 A | 2 | 100% |  |  |  |  | 16h | 16h |
| 12 | 1.3.1 | **[AP] Laborübungen nach C++ portieren** |  | 2.25d | 2017-03-29 A | 2017-04-05 A |  | 100% |  |  |  |  | 16h | 16h |
| 13 | 1.3.1.1 | C++ Tutorial Willert |  | 2h | 2017-03-29 A | 2017-03-29 A |  | 100% |  |  |  |  | 2h | 2h |
| 14 | 1.3.1.2 | Übungen 1-3 |  | 4h | 2017-03-29 A | 2017-04-01 A | 13 | 100% |  |  |  |  | 4h | 4h |
| 15 | 1.3.1.3 | Übungen 4-6 |  | 6h | 2017-04-01 A | 2017-04-05 A | 14 | 100% |  |  |  |  | 6h | 6h |
| 16 | 1.3.1.4 | Übungen 7-9 |  | 4h | 2017-04-05 A | 2017-04-05 A | 15 | 100% |  |  |  |  | 4h | 4h |
| 17 | 1.3.2 | **[AP] Observer** |  | 1d | 2017-04-05 A | 2017-04-10 A | 12 | 100% |  |  |  |  |  |  |
| 18 | 1.3.2.1 | Einarbeitung |  | 4h | 2017-04-05 A | 2017-04-08 A |  | 100% |  |  |  |  |  |  |
| 19 | 1.3.2.2 | Implementierung |  | 1d | 2017-04-05 A | 2017-04-10 A |  | 100% |  |  |  |  |  |  |
| 20 | 1.3.3 | **[AP] Dokumentation** |  | 0.5d | 2017-04-12 A | 2017-04-12 A | 17 | 100% |  |  |  |  |  |  |
| 21 | 1.3.3.1 | Bericht erstellen |  | 4h | 2017-04-12 A | 2017-04-12 A |  | 100% |  |  |  |  |  |  |
| 22 | 1.4 | [MS] Bestehendes Labor portiert | milestone | 0d | 2017-04-12 A | 2017-04-12 A | 11 | 100% |  |  |  |  |  |  |
| 23 | 1.5 | **[Phase] Implementierung** |  | 29d | 2017-04-12 A | 2017-08-21 | 22 | 50% | 14.5d | 0.17d | 0d |  |  |  |
| 24 | 1.5.1 | **[AP] Ethernet** |  | 11d | 2017-04-12 A | 2017-05-24 A |  | 100% |  |  |  |  |  |  |
| 25 | 1.5.1.1 | Bestehende Arbeit analysieren |  | 1d | 2017-04-12 A | 2017-04-16 A |  | 100% |  |  |  |  |  |  |
| 26 | 1.5.1.2 | Keil Projekt konfigurieren |  | 4d | 2017-04-12 A | 2017-04-26 A | 25 | 100% |  |  |  |  |  |  |
| 27 | 1.5.1.3 | Rhapsody Implementierung |  | 4d | 2017-04-25 A | 2017-05-10 A | 26 | 100% |  |  |  |  |  |  |
| 28 | 1.5.1.4 | Dokumentation |  | 4d | 2017-05-10 A | 2017-05-24 A | 27 | 100% |  |  |  |  |  |  |

| ID | WBS | Task | Type | Duration | Start | Finish | Predecessors | Complete | Remaining | Total slack | Free slack |
| --- | --- | --- | --- | --- | --- | --- | --- | --- | --- | --- | --- |
| 29 | 1.5.2 | **[AP] SD-Karte** |  | 7d | 2017-05-06 A | 2017-06-03 | 24 | 71% | 2d | 0.17d | 0d |
| 30 | 1.5.2.1 | Keil Projekt konfigurieren |  | 3d | 2017-05-06 A | 2017-05-17 A |  | 100% |  |  |  |
| 31 | 1.5.2.2 | Rhapsody Implementierung |  | 2d | 2017-05-27 A | 2017-06-03 A | 30 | 100% |  |  |  |
| 32 | 1.5.2.3 | Dokumentation |  | 2d | 2017-05-27 | 2017-06-03 |  |  |  | 0.17d |  |
| 33 | 1.5.3 | **[AP] WLAN** |  | 16d | 2017-06-03 | 2017-08-21 | 29 |  |  | 0.17d |  |
| 34 | 1.5.3.1 | WLAN Anbindung analysieren |  | 3d | 2017-06-03 | 2017-07-18 |  |  |  | 0.17d | 0d |
| 35 | 1.5.3.2 | Inbetriebnahme ESP8266 |  | 2d | 2017-07-18 | 2017-07-24 | 34 |  |  | 0.17d | 0d |
| 36 | 1.5.3.3 | Keil Projekt konfigurieren |  | 4d | 2017-07-25 | 2017-08-02 | 35 |  |  | 0.17d | 0d |
| 37 | 1.5.3.4 | Rhapsody Implementierung |  | 4d | 2017-08-02 | 2017-08-13 | 36 |  |  | 0.17d | 0d |
| 38 | 1.5.3.5 | Dokumentation |  | 3d | 2017-08-14 | 2017-08-21 | 37 |  |  | 0.17d |  |
| 39 | 1.6 | [MS] Neue Features implementiert | milestone | 0d | 2017-08-21 | 2017-08-21 | 23 |  |  | 0.17d | 0d |
| 40 | 1.7 | **[Phase] Test** |  | 6.25d | 2017-08-22 A | 2017-09-04 | 39 | 3% | 6.08d | 0d |  |
| 41 | 1.7.1 | **[AP] Test Conductor** |  | 6.25d | 2017-08-22 A | 2017-09-04 |  | 3% | 6.08d | 0d |  |
| 42 | 1.7.1.1 | Webinar Willert |  | 2h | 2017-08-22 A | 2017-08-22 A |  | 100% |  |  |  |
| 43 | 1.7.1.2 | Analyse Test Conductor |  | 2d | 2017-08-22 | 2017-08-26 | 42 |  |  | 0d |  |
| 44 | 1.7.1.3 | Modellbasierter Test für Laborübung implementieren |  | 4d | 2017-08-26 | 2017-09-04 | 43 |  |  | 0d |  |
| 45 | 1.7.1.4 | Dokumentation |  | 3d | 2017-08-22 | 2017-08-29 |  |  |  | 3.25d |  |
| 46 | 1.8 | [MS] Übungen modellbasiert verifiziert | milestone | 0d | 2017-09-04 | 2017-09-04 | 40 |  |  | 0d |  |
| 47 | 1.9 | **[Phase] Dokumentation** |  | 4d | 2017-09-04 | 2017-09-08 | 46 |  |  | 0d |  |
| 48 | 1.9.1 | **[AP] Bericht** |  | 2d | 2017-09-04 | 2017-09-06 |  |  |  | 0d |  |
| 49 | 1.9.1.1 | Erstellen |  | 2d | 2017-09-04 | 2017-09-06 |  |  |  | 0d |  |
| 50 | 1.9.2 | **[AP] Präsentation** |  | 2d | 2017-09-06 | 2017-09-08 | 48 |  |  | 0d |  |
| 51 | 1.9.2.1 | Erstellen |  | 2d | 2017-09-06 | 2017-09-08 |  |  |  | 0d |  |
| 52 | 1.10 | [MS] Dokumentation vollständig | milestone | 0d | 2017-09-08 | 2017-09-08 | 47 |  |  | 0d |  |
